| id | name | start | end | duration | order | attributes | milestone |
| --- | --- | --- | --- | --- | --- | --- | --- |
| 1 | RC / 5.1.4 Especificación y compra del sistema de cadena de frío | 2027-02-01 | 2027-03-31 | 42 | 0 | 1 RC / 5.1.4 Especificación y compra del sistema de cadena de frío #c00000 false 2027-02-01 42 0 true |  |
| 2 | PT/H / 7 elementos: 1.1.1, 1.1.2, 1.1.3, 1.4.1, 1.4.2, 1.9.1, 1.9.2 | 2027-02-01 | 2027-02-09 | 7 | 1 | 2 PT/H / 7 elementos: 1.1.1, 1.1.2, 1.1.3, 1.4.1, 1.4.2, 1.9.1, 1.9.2 #4472c4 false 2027-02-01 7 0 true |  |
| 3 | PT/H / 1.2.1 Documento de especificación de requerimientos y línea base de alcance de la Etapa 1 (H1) | 2027-02-01 | 2027-02-09 | 7 | 2 | 3 PT/H / 1.2.1 Documento de especificación de requerimientos y línea base de alcance de la Etapa 1 (H1) #4472c4 false 2027-02-01 7 0 true |  |
| 4 | PT/H / 1.2.2 Documento de reglas de ruteo capturadas al planificador de rutas | 2027-02-01 | 2027-04-30 | 64 | 3 | 4 PT/H / 1.2.2 Documento de reglas de ruteo capturadas al planificador de rutas #4472c4 false 2027-02-01 64 0 true |  |
| 5 | PT/H / 1.2.3 Documento de especificación de las interfaces sin documentación del ERP, del WMS de 2013 y de la telemetría del tercero | 2027-02-01 | 2027-02-09 | 7 | 4 | 5 PT/H / 1.2.3 Documento de especificación de las interfaces sin documentación del ERP, del WMS de 2013 y de la telemetría del tercero #4472c4 false 2027-02-01 7 0 true |  |
| 6 | PT/H / 5 elementos: 1.3.5, 1.6.2, 1.8.1, 1.8.3, 1.8.6 | 2027-02-01 | 2028-09-29 | 419 | 5 | 6 PT/H / 5 elementos: 1.3.5, 1.6.2, 1.8.1, 1.8.3, 1.8.6 #4472c4 false 2027-02-01 419 0 true |  |
| 7 | PT/H / 2 elementos: 2.3.1, 2.3.2 | 2027-02-01 | 2027-03-01 | 21 | 6 | 7 PT/H / 2 elementos: 2.3.1, 2.3.2 #4472c4 false 2027-02-01 21 0 true |  |
| 8 | PT/H / 1.3.1 Plan para la dirección del proyecto, con el calendario de congelamientos de septiembre, diciembre y el cierre mensual | 2027-02-10 | 2027-02-18 | 7 | 7 | 8 PT/H / 1.3.1 Plan para la dirección del proyecto, con el calendario de congelamientos de septiembre, diciembre y el cierre mensual #4472c4 false 2027-02-10 7 0 true |  |
| 9 | PT/H / 1.2.4 Matriz de trazabilidad: requerimiento, módulo, paquete y prueba (H1) | 2027-03-01 | 2027-03-09 | 7 | 8 | 9 PT/H / 1.2.4 Matriz de trazabilidad: requerimiento, módulo, paquete y prueba (H1) #4472c4 false 2027-03-01 7 0 true |  |
| 10 | PT/H / 7 elementos: 1.3.2, 1.3.3, 1.3.4, 1.5.1, 1.6.1, 1.9.3, 5.1.1 | 2027-03-01 | 2027-03-09 | 7 | 9 | 10 PT/H / 7 elementos: 1.3.2, 1.3.3, 1.3.4, 1.5.1, 1.6.1, 1.9.3, 5.1.1 #4472c4 false 2027-03-01 7 0 true |  |
| 11 | PT/H / 2.1.1 Documento de arquitectura lógica: capas, módulos M1 a M12 e interfaces | 2027-03-01 | 2027-03-29 | 20 | 10 | 11 PT/H / 2.1.1 Documento de arquitectura lógica: capas, módulos M1 a M12 e interfaces #4472c4 false 2027-03-01 20 0 true |  |
| 12 | PT/H / 3 elementos: 2.1.2, 2.1.3, 2.2.4 | 2027-03-01 | 2027-03-29 | 20 | 11 | 12 PT/H / 3 elementos: 2.1.2, 2.1.3, 2.2.4 #4472c4 false 2027-03-01 20 0 true |  |
| 13 | PT/H / 2.2.1 Plan de seguridad de la información | 2027-03-01 | 2027-03-29 | 20 | 12 | 13 PT/H / 2.2.1 Plan de seguridad de la información #4472c4 false 2027-03-01 20 0 true |  |
| 14 | PT/H / 2 elementos: 2.3.3, 2.6.1 | 2027-03-01 | 2027-03-29 | 20 | 13 | 14 PT/H / 2 elementos: 2.3.3, 2.6.1 #4472c4 false 2027-03-01 20 0 true |  |
| 15 | PT/H / 3.10.2.1 Innovación 2: informe de medición inicial y contrato de evidencia (INN-02.P1) | 2027-03-01 | 2027-04-20 | 36 | 14 | 15 PT/H / 3.10.2.1 Innovación 2: informe de medición inicial y contrato de evidencia (INN-02.P1) #4472c4 false 2027-03-01 36 0 true |  |
| 16 | PT/H / 5.2.1 Contrato de los servicios de AWS | 2027-03-01 | 2027-03-09 | 7 | 15 | 16 PT/H / 5.2.1 Contrato de los servicios de AWS #4472c4 false 2027-03-01 7 0 true |  |
| 17 | PT/H / 5.3.4 Contrato de SIM M2M y servicio satelital de los camiones con frío | 2027-03-01 | 2027-03-12 | 10 | 16 | 17 PT/H / 5.3.4 Contrato de SIM M2M y servicio satelital de los camiones con frío #4472c4 false 2027-03-01 10 0 true |  |
| 18 | PT/H / 7.2.3 Diagnóstico del impacto organizacional por área y perfil, con agentes de cambio | 2027-03-01 | 2027-05-25 | 60 | 17 | 18 PT/H / 7.2.3 Diagnóstico del impacto organizacional por área y perfil, con agentes de cambio #4472c4 false 2027-03-01 60 0 true |  |
| 19 | PT/H / 5.1.2 Especificación y compra de la sala técnica, los racks, los servidores y los gabinetes de borde | 2027-03-02 | 2027-03-10 | 7 | 18 | 19 PT/H / 5.1.2 Especificación y compra de la sala técnica, los racks, los servidores y los gabinetes de borde #4472c4 false 2027-03-02 7 0 true |  |
| 20 | PT/H / H1 — entrega del expediente | 2027-03-09 | 2027-03-09 | 0 | 19 | 20 PT/H / H1 — entrega del expediente #404040 true 2027-03-09 0 0 true | True |
| 21 | PT/H / H1 — acta del CLIENTE (límite: mes 2) | 2027-03-23 | 2027-03-23 | 0 | 20 | 21 PT/H / H1 — acta del CLIENTE (límite: mes 2) #404040 true 2027-03-23 0 0 true | True |
| 22 | RC / 2.4.3 Validación del diseño del kit en banco de pruebas | 2027-04-01 | 2027-04-30 | 22 | 21 | 22 RC / 2.4.3 Validación del diseño del kit en banco de pruebas #c00000 false 2027-04-01 22 0 true |  |
| 23 | PT/H / 1.7.1 Plan de Reversibilidad inicial (primeros 90 días) | 2027-04-01 | 2027-04-09 | 7 | 22 | 23 PT/H / 1.7.1 Plan de Reversibilidad inicial (primeros 90 días) #4472c4 false 2027-04-01 7 0 true |  |
| 24 | PT/H / 2.2.2 Modelado de amenazas por componente y por integración externa, actualizado ante cada cambio | 2027-04-01 | 2027-11-30 | 167 | 23 | 24 PT/H / 2.2.2 Modelado de amenazas por componente y por integración externa, actualizado ante cada cambio #4472c4 false 2027-04-01 167 0 true |  |
| 25 | PT/H / 2.2.3 Plan de respuesta a incidentes de seguridad, con aviso al CLIENTE en dos horas | 2027-04-01 | 2027-04-16 | 12 | 24 | 25 PT/H / 2.2.3 Plan de respuesta a incidentes de seguridad, con aviso al CLIENTE en dos horas #4472c4 false 2027-04-01 12 0 true |  |
| 26 | PT/H / 2 elementos: 2.5.1, 2.5.2 | 2027-04-01 | 2027-04-29 | 21 | 25 | 26 PT/H / 2 elementos: 2.5.1, 2.5.2 #4472c4 false 2027-04-01 21 0 true |  |
| 27 | PT/H / 2.6.2 Prototipos y pruebas de usabilidad con participantes del CLIENTE | 2027-04-01 | 2027-04-29 | 21 | 26 | 27 PT/H / 2.6.2 Prototipos y pruebas de usabilidad con participantes del CLIENTE #4472c4 false 2027-04-01 21 0 true |  |
| 28 | PT/H / 2 elementos: 3.10.2.2, 3.10.3.1 | 2027-04-01 | 2027-06-09 | 49 | 27 | 28 PT/H / 2 elementos: 3.10.2.2, 3.10.3.1 #4472c4 false 2027-04-01 49 0 true |  |
| 29 | PT/H / 4 elementos: 6.1.1, 6.1.2, 6.1.3, 6.1.4 | 2027-04-01 | 2027-04-20 | 14 | 28 | 29 PT/H / 4 elementos: 6.1.1, 6.1.2, 6.1.3, 6.1.4 #4472c4 false 2027-04-01 14 0 true |  |
| 30 | PT/H / 2.4.1 Acta de aprobación de la arquitectura, el plan de seguridad y el modelo de datos (H2) | 2027-04-19 | 2027-04-29 | 9 | 29 | 30 PT/H / 2.4.1 Acta de aprobación de la arquitectura, el plan de seguridad y el modelo de datos (H2) #4472c4 false 2027-04-19 9 0 true |  |
| 31 | PT/H / H2 — entrega del expediente | 2027-04-29 | 2027-04-29 | 0 | 30 | 31 PT/H / H2 — entrega del expediente #404040 true 2027-04-29 0 0 true | True |
| 32 | RC / 2.6.3 Indicadores de usabilidad comprometidos por transacción crítica | 2027-05-03 | 2027-05-31 | 20 | 31 | 32 RC / 2.6.3 Indicadores de usabilidad comprometidos por transacción crítica #c00000 false 2027-05-03 20 0 true |  |
| 33 | RC / 3.1.4 Cadena de integración y entrega continua, e infraestructura como código | 2027-05-03 | 2027-05-31 | 20 | 32 | 33 RC / 3.1.4 Cadena de integración y entrega continua, e infraestructura como código #c00000 false 2027-05-03 20 0 true |  |
| 34 | RC / 4 elementos: 3.2.1, 3.2.2, 3.2.4, 3.2.5 | 2027-05-03 | 2027-05-31 | 20 | 33 | 34 RC / 4 elementos: 3.2.1, 3.2.2, 3.2.4, 3.2.5 #c00000 false 2027-05-03 20 0 true |  |
| 35 | RC / 3.2.3 Servicio de nube de ingesta de IoT, telemetría cruda y plataforma analítica | 2027-05-03 | 2027-05-31 | 20 | 34 | 35 RC / 3.2.3 Servicio de nube de ingesta de IoT, telemetría cruda y plataforma analítica #c00000 false 2027-05-03 20 0 true |  |
| 36 | RC / 6.1.5 Acta de recepción técnica de la sala | 2027-05-03 | 2027-05-20 | 14 | 35 | 36 RC / 6.1.5 Acta de recepción técnica de la sala #c00000 false 2027-05-03 14 0 true |  |
| 37 | PT/H / 2.4.4 Mapeo térmico por tipo de carrocería | 2027-05-03 | 2027-05-28 | 19 | 36 | 37 PT/H / 2.4.4 Mapeo térmico por tipo de carrocería #4472c4 false 2027-05-03 19 0 true |  |
| 38 | PT/H / 2 elementos: 3.11.3, 3.11.4 | 2027-05-03 | 2028-09-29 | 355 | 37 | 38 PT/H / 2 elementos: 3.11.3, 3.11.4 #4472c4 false 2027-05-03 355 0 true |  |
| 39 | PT/H / 5 elementos: 5.2.2, 5.2.3, 5.3.1, 5.3.2, 5.3.3 | 2027-05-03 | 2027-05-11 | 7 | 38 | 39 PT/H / 5 elementos: 5.2.2, 5.2.3, 5.3.1, 5.3.2, 5.3.3 #4472c4 false 2027-05-03 7 0 true |  |
| 40 | PT/H / 6.2.1 Cableado de cobre Cat6A y fibra OM4 tendido, con dos ductos de ingreso independientes | 2027-05-03 | 2027-05-20 | 14 | 39 | 40 PT/H / 6.2.1 Cableado de cobre Cat6A y fibra OM4 tendido, con dos ductos de ingreso independientes #4472c4 false 2027-05-03 14 0 true |  |
| 41 | PT/H / 6.3.3 Gabinete de borde de Concepción montado: servidores activo y en espera, firewalls, switches, UPS, climatización y monitoreo | 2027-05-03 | 2027-05-20 | 14 | 40 | 41 PT/H / 6.3.3 Gabinete de borde de Concepción montado: servidores activo y en espera, firewalls, switches, UPS, climatización y monitoreo #4472c4 false 2027-05-03 14 0 true |  |
| 42 | PT/H / H2 — acta del CLIENTE (límite: mes 4) | 2027-05-13 | 2027-05-13 | 0 | 41 | 42 PT/H / H2 — acta del CLIENTE (límite: mes 4) #404040 true 2027-05-13 0 0 true | True |
| 43 | RC / 2 elementos: 6.3.1, 6.3.2 | 2027-05-24 | 2027-06-09 | 13 | 42 | 43 RC / 2 elementos: 6.3.1, 6.3.2 #c00000 false 2027-05-24 13 0 true |  |
| 44 | PT/H / 3 elementos: 3.1.1, 3.1.2, 3.1.3 | 2027-06-01 | 2027-06-18 | 14 | 43 | 44 PT/H / 3 elementos: 3.1.1, 3.1.2, 3.1.3 #4472c4 false 2027-06-01 14 0 true |  |
| 45 | PT/H / 3.1.5 Observabilidad de los doce módulos y de los sitios, con tableros para el CLIENTE (H3) | 2027-06-01 | 2027-06-18 | 14 | 44 | 45 PT/H / 3.1.5 Observabilidad de los doce módulos y de los sitios, con tableros para el CLIENTE (H3) #4472c4 false 2027-06-01 14 0 true |  |
| 46 | PT/H / 3.2.6 Servicio de gestión de dispositivos móviles | 2027-06-01 | 2027-06-29 | 19 | 45 | 46 PT/H / 3.2.6 Servicio de gestión de dispositivos móviles #4472c4 false 2027-06-01 19 0 true |  |
| 47 | PT/H / 3.3.1 Identidad y control de acceso, incluidos los conductores externos que rotan sin aviso | 2027-06-01 | 2027-08-05 | 45 | 46 | 47 PT/H / 3.3.1 Identidad y control de acceso, incluidos los conductores externos que rotan sin aviso #4472c4 false 2027-06-01 45 0 true |  |
| 48 | PT/H / 3.3.2 Integración con el ERP como único emisor de la guía de despacho (INT-06 e INT-07) | 2027-06-01 | 2027-07-01 | 21 | 47 | 48 PT/H / 3.3.2 Integración con el ERP como único emisor de la guía de despacho (INT-06 e INT-07) #4472c4 false 2027-06-01 21 0 true |  |
| 49 | PT/H / 3.3.3 Convivencia con el WMS de 2013 durante el reemplazo | 2027-06-01 | 2027-07-07 | 25 | 48 | 49 PT/H / 3.3.3 Convivencia con el WMS de 2013 durante el reemplazo #4472c4 false 2027-06-01 25 0 true |  |
| 50 | PT/H / 3.3.5 Registro auditable de stock, lotes y cobros | 2027-06-01 | 2027-08-03 | 43 | 49 | 50 PT/H / 3.3.5 Registro auditable de stock, lotes y cobros #4472c4 false 2027-06-01 43 0 true |  |
| 51 | PT/H / 3.10.2.3 Innovación 2: captura de evidencia en las aplicaciones de preventa, preparación y reparto (INN-02.P3) | 2027-06-01 | 2027-10-08 | 90 | 50 | 51 PT/H / 3.10.2.3 Innovación 2: captura de evidencia en las aplicaciones de preventa, preparación y reparto (INN-02.P3) #4472c4 false 2027-06-01 90 0 true |  |
| 52 | PT/H / 5.1.3 Actas de recepción técnica del equipamiento de terreno comprado por el CLIENTE y de la infraestructura provista por LafroX | 2027-06-01 | 2027-06-09 | 7 | 51 | 52 PT/H / 5.1.3 Actas de recepción técnica del equipamiento de terreno comprado por el CLIENTE y de la infraestructura provista por LafroX #4472c4 false 2027-06-01 7 0 true |  |
| 53 | PT/H / 6.4.1 Hardware de control de acceso biométrico y esclusa instalado | 2027-06-01 | 2027-06-18 | 14 | 52 | 53 PT/H / 6.4.1 Hardware de control de acceso biométrico y esclusa instalado #4472c4 false 2027-06-01 14 0 true |  |
| 54 | PT/H / 3.3.6 Operación sin conexión: 14 horas en terreno y 24 horas en el CD | 2027-06-07 | 2027-08-03 | 39 | 53 | 54 PT/H / 3.3.6 Operación sin conexión: 14 horas en terreno y 24 horas en el CD #4472c4 false 2027-06-07 39 0 true |  |
| 55 | PT/H / 3.10.3.2 Innovación 3: asociación lote–sensor en el borde y en el camión (INN-03.P2) | 2027-06-07 | 2027-09-20 | 72 | 54 | 55 PT/H / 3.10.3.2 Innovación 3: asociación lote–sensor en el borde y en el camión (INN-03.P2) #4472c4 false 2027-06-07 72 0 true |  |
| 56 | PT/H / 6.4.2 Hardware de videovigilancia instalado | 2027-06-07 | 2027-06-24 | 13 | 55 | 56 PT/H / 6.4.2 Hardware de videovigilancia instalado #4472c4 false 2027-06-07 13 0 true |  |
| 57 | RC / 2 elementos: 6.6.1, 6.6.2 | 2027-06-10 | 2027-06-30 | 13 | 56 | 57 RC / 2 elementos: 6.6.1, 6.6.2 #c00000 false 2027-06-10 13 0 true |  |
| 58 | PT/H / 3.3.4 Integración con la telemetría de los 42 camiones propios (INT-15) | 2027-06-10 | 2027-07-12 | 21 | 57 | 58 PT/H / 3.3.4 Integración con la telemetría de los 42 camiones propios (INT-15) #4472c4 false 2027-06-10 21 0 true |  |
| 59 | PT/H / 3.4.1 Recepción de mercadería con captura de lote y vencimiento (M1 Recepción) | 2027-06-10 | 2027-08-10 | 41 | 58 | 59 PT/H / 3.4.1 Recepción de mercadería con captura de lote y vencimiento (M1 Recepción) #4472c4 false 2027-06-10 41 0 true |  |
| 60 | PT/H / 3.4.2 Inventario por ubicación y lote, con FEFO y conteo cíclico (M2 Inventario) | 2027-06-10 | 2027-08-11 | 42 | 59 | 60 PT/H / 3.4.2 Inventario por ubicación y lote, con FEFO y conteo cíclico (M2 Inventario) #4472c4 false 2027-06-10 42 0 true |  |
| 61 | PT/H / 3.4.10 Cobro en ruta, rendición y conciliación (M7 Cobranza y rendición) | 2027-06-10 | 2027-10-04 | 79 | 60 | 61 PT/H / 3.4.10 Cobro en ruta, rendición y conciliación (M7 Cobranza y rendición) #4472c4 false 2027-06-10 79 0 true |  |
| 62 | PT/H / 6.6.3 Borde de los CD en servicio, con la prueba de autonomía de 24 horas aprobada | 2027-06-10 | 2027-06-18 | 7 | 61 | 62 PT/H / 6.6.3 Borde de los CD en servicio, con la prueba de autonomía de 24 horas aprobada #4472c4 false 2027-06-10 7 0 true |  |
| 63 | PT/H / 3.4.3 Preparación de pedidos en el turno de noche y en la cámara de congelado (M5 Preparación) | 2027-06-14 | 2027-08-18 | 45 | 62 | 63 PT/H / 3.4.3 Preparación de pedidos en el turno de noche y en la cámara de congelado (M5 Preparación) #4472c4 false 2027-06-14 45 0 true |  |
| 64 | PT/H / 3.4.4 Cadena de frío, retención por SSCC y retiro sanitario (M9 Calidad y trazabilidad) | 2027-06-14 | 2027-09-29 | 74 | 63 | 64 PT/H / 3.4.4 Cadena de frío, retención por SSCC y retiro sanitario (M9 Calidad y trazabilidad) #4472c4 false 2027-06-14 74 0 true |  |
| 65 | PT/H / 3.4.5 Ingesta de temperatura (M9) y posición de flota (M12) | 2027-06-14 | 2027-08-30 | 53 | 64 | 65 PT/H / 3.4.5 Ingesta de temperatura (M9) y posición de flota (M12) #4472c4 false 2027-06-14 53 0 true |  |
| 66 | PT/H / 3.4.6 Aplicación móvil de preventa sin conexión, con stock y crédito (M3 Preventa) | 2027-06-16 | 2027-08-17 | 42 | 65 | 66 PT/H / 3.4.6 Aplicación móvil de preventa sin conexión, con stock y crédito (M3 Preventa) #4472c4 false 2027-06-16 42 0 true |  |
| 67 | PT/H / 3.4.7 Planificación de rutas corregible por el planificador (M4 Rutas) | 2027-06-16 | 2027-09-08 | 58 | 66 | 67 PT/H / 3.4.7 Planificación de rutas corregible por el planificador (M4 Rutas) #4472c4 false 2027-06-16 58 0 true |  |
| 68 | PT/H / 3.4.8 Aplicación móvil de reparto con prueba de entrega digital (M6 Reparto) | 2027-06-16 | 2027-09-09 | 59 | 67 | 68 PT/H / 3.4.8 Aplicación móvil de reparto con prueba de entrega digital (M6 Reparto) #4472c4 false 2027-06-16 59 0 true |  |
| 69 | RC / 3.4.9 Devoluciones en terreno y control de envases (M8 Devoluciones y envases) | 2027-06-18 | 2027-09-30 | 71 | 68 | 69 RC / 3.4.9 Devoluciones en terreno y control de envases (M8 Devoluciones y envases) #c00000 false 2027-06-18 71 0 true |  |
| 70 | PT/H / H3 — entrega del expediente | 2027-06-18 | 2027-06-18 | 0 | 69 | 70 PT/H / H3 — entrega del expediente #404040 true 2027-06-18 0 0 true | True |

| id | name | start | end | duration | order | attributes | milestone |
| --- | --- | --- | --- | --- | --- | --- | --- |
| 71 | PT/H / 6.4.3 Recinto de custodia de respaldos habilitado | 2027-06-22 | 2027-07-09 | 13 | 70 | 71 PT/H / 6.4.3 Recinto de custodia de respaldos habilitado #4472c4 false 2027-06-22 13 0 true |  |
| 72 | PT/H / 2 elementos: 1.5.2, 3.11.5 | 2027-07-01 | 2028-09-29 | 315 | 71 | 72 PT/H / 2 elementos: 1.5.2, 3.11.5 #4472c4 false 2027-07-01 315 0 true |  |
| 73 | PT/H / 3 elementos: 3.6.2, 3.6.3, 3.6.4 | 2027-07-01 | 2027-08-02 | 22 | 72 | 73 PT/H / 3 elementos: 3.6.2, 3.6.3, 3.6.4 #4472c4 false 2027-07-01 22 0 true |  |
| 74 | PT/H / 6.2.2 Certificación de enlaces, etiquetado y planos as-built | 2027-07-01 | 2027-07-20 | 13 | 73 | 74 PT/H / 6.2.2 Certificación de enlaces, etiquetado y planos as-built #4472c4 false 2027-07-01 13 0 true |  |
| 75 | PT/H / H3 — acta del CLIENTE (límite: mes 6) | 2027-07-06 | 2027-07-06 | 0 | 74 | 75 PT/H / H3 — acta del CLIENTE (límite: mes 6) #404040 true 2027-07-06 0 0 true | True |
| 76 | PT/H / 3.6.1 Intercambio de lote y trazabilidad con los proveedores | 2027-08-02 | 2027-09-01 | 23 | 75 | 76 PT/H / 3.6.1 Intercambio de lote y trazabilidad con los proveedores #4472c4 false 2027-08-02 23 0 true |  |
| 77 | PT/H / 3.10.1.1 Innovación 1: documento de catálogo de acciones y protocolo del piloto (INN-01.P1) | 2027-08-02 | 2027-10-08 | 49 | 76 | 77 PT/H / 3.10.1.1 Innovación 1: documento de catálogo de acciones y protocolo del piloto (INN-01.P1) #4472c4 false 2027-08-02 49 0 true |  |
| 78 | PT/H / 5.4.4 Contrato de custodia de fuentes con un tercero independiente | 2027-08-02 | 2027-08-10 | 7 | 77 | 78 PT/H / 5.4.4 Contrato de custodia de fuentes con un tercero independiente #4472c4 false 2027-08-02 7 0 true |  |
| 79 | PT/H / 6.2.3 Gabinetes de piso y switches de acceso instalados en las bodegas de Talca y Concepción | 2027-08-02 | 2027-08-19 | 14 | 78 | 79 PT/H / 6.2.3 Gabinetes de piso y switches de acceso instalados en las bodegas de Talca y Concepción #4472c4 false 2027-08-02 14 0 true |  |
| 80 | PT/H / 3.7.1 Informe de perfilamiento y datos saneados | 2027-08-04 | 2027-10-01 | 42 | 79 | 80 PT/H / 3.7.1 Informe de perfilamiento y datos saneados #4472c4 false 2027-08-04 42 0 true |  |
| 81 | PT/H / 6.5.4 Kit de cadena de frío instalado y recibido en los 28 camiones con frío | 2027-09-01 | 2028-01-14 | 94 | 80 | 81 PT/H / 6.5.4 Kit de cadena de frío instalado y recibido en los 28 camiones con frío #4472c4 false 2027-09-01 94 0 true |  |
| 82 | PT/H / 7.2.4 Procedimientos operativos rediseñados, contingencia de frío y ruptura confirmada | 2027-09-01 | 2028-09-29 | 272 | 81 | 82 PT/H / 7.2.4 Procedimientos operativos rediseñados, contingencia de frío y ruptura confirmada #4472c4 false 2027-09-01 272 0 true |  |
| 83 | PT/H / 3.4.11 Indicadores operacionales y OTIF diario (M10 Analítica) | 2027-09-02 | 2027-09-27 | 17 | 82 | 83 PT/H / 3.4.11 Indicadores operacionales y OTIF diario (M10 Analítica) #4472c4 false 2027-09-02 17 0 true |  |
| 84 | PT/H / Cuatro kits de frío recibidos para el piloto | 2027-09-30 | 2027-09-30 | 0 | 83 | 84 PT/H / Cuatro kits de frío recibidos para el piloto #404040 true 2027-09-30 0 0 true | True |
| 85 | PT/H / 3 elementos: 3.10.1.2, 3.10.1.3, 3.10.3.3 | 2027-10-01 | 2027-11-19 | 34 | 84 | 85 PT/H / 3 elementos: 3.10.1.2, 3.10.1.3, 3.10.3.3 #4472c4 false 2027-10-01 34 0 true |  |
| 86 | PT/H / 2 elementos: 5.4.1, 5.4.2 | 2027-10-01 | 2027-10-12 | 7 | 85 | 86 PT/H / 2 elementos: 5.4.1, 5.4.2 #4472c4 false 2027-10-01 7 0 true |  |
| 87 | PT/H / 6.3.4 Gabinetes de borde montados en Curicó, Chillán y Los Ángeles, con dos mini-PC (activo y en espera) por plataforma | 2027-10-01 | 2027-10-20 | 13 | 86 | 87 PT/H / 6.3.4 Gabinetes de borde montados en Curicó, Chillán y Los Ángeles, con dos mini-PC (activo y en espera) por plataforma #4472c4 false 2027-10-01 13 0 true |  |
| 88 | PT/H / 3.7.2 Datos maestros cargados: 8.400 SKU, clientes e instalaciones | 2027-10-04 | 2027-11-03 | 21 | 87 | 88 PT/H / 3.7.2 Datos maestros cargados: 8.400 SKU, clientes e instalaciones #4472c4 false 2027-10-04 21 0 true |  |
| 89 | PT/H / 3.8.1 Pruebas de integración, regresión e idempotencia en QA (H4) | 2027-10-05 | 2027-10-22 | 13 | 88 | 89 PT/H / 3.8.1 Pruebas de integración, regresión e idempotencia en QA (H4) #4472c4 false 2027-10-05 13 0 true |  |
| 90 | PT/H / 6.5.1 Terminales de preventa, reparto y bodega configurados y enrolados | 2027-10-06 | 2028-01-14 | 70 | 89 | 90 PT/H / 6.5.1 Terminales de preventa, reparto y bodega configurados y enrolados #4472c4 false 2027-10-06 70 0 true |  |
| 91 | PT/H / 6.5.3 Sensores de cámara y gateways IoT instalados en Talca y Concepción | 2027-10-06 | 2027-11-25 | 35 | 90 | 91 PT/H / 6.5.3 Sensores de cámara y gateways IoT instalados en Talca y Concepción #4472c4 false 2027-10-06 35 0 true |  |
| 92 | PT/H / 6.5.6 Impresoras de andén y balanzas de recepción instaladas | 2027-10-06 | 2028-01-14 | 70 | 91 | 92 PT/H / 6.5.6 Impresoras de andén y balanzas de recepción instaladas #4472c4 false 2027-10-06 70 0 true |  |
| 93 | PT/H / H4 — entrega del expediente | 2027-10-22 | 2027-10-22 | 0 | 92 | 93 PT/H / H4 — entrega del expediente #404040 true 2027-10-22 0 0 true | True |
| 94 | PT/H / 2 elementos: 3.8.2, 3.8.3 | 2027-10-25 | 2027-11-19 | 19 | 93 | 94 PT/H / 2 elementos: 3.8.2, 3.8.3 #4472c4 false 2027-10-25 19 0 true |  |
| 95 | PT/H / 4 elementos: 3.8.4, 3.8.5, 3.8.6, 3.8.8 | 2027-10-25 | 2027-11-11 | 13 | 94 | 95 PT/H / 4 elementos: 3.8.4, 3.8.5, 3.8.6, 3.8.8 #4472c4 false 2027-10-25 13 0 true |  |
| 96 | PT/H / 3.11.2 Base de conocimiento de incidentes y decisiones de diseño | 2027-11-02 | 2028-09-29 | 231 | 95 | 96 PT/H / 3.11.2 Base de conocimiento de incidentes y decisiones de diseño #4472c4 false 2027-11-02 231 0 true |  |
| 97 | PT/H / 4.1.1 Plan de olas de la Etapa 1 por sitio y zona: Talca, Concepción y plataformas de cross-docking | 2027-11-02 | 2027-11-10 | 7 | 96 | 97 PT/H / 4.1.1 Plan de olas de la Etapa 1 por sitio y zona: Talca, Concepción y plataformas de cross-docking #4472c4 false 2027-11-02 7 0 true |  |
| 98 | PT/H / 2 elementos: 7.1.1, 7.1.6 | 2027-11-02 | 2027-12-24 | 38 | 97 | 98 PT/H / 2 elementos: 7.1.1, 7.1.6 #4472c4 false 2027-11-02 38 0 true |  |
| 99 | PT/H / 7.1.5 Materiales de capacitación: manuales por perfil, guías rápidas, preguntas frecuentes y videos tutoriales | 2027-11-02 | 2028-07-31 | 190 | 98 | 99 PT/H / 7.1.5 Materiales de capacitación: manuales por perfil, guías rápidas, preguntas frecuentes y videos tutoriales #4472c4 false 2027-11-02 190 0 true |  |
| 100 | PT/H / 7.2.1 Acompañamiento del personal con 20 o 30 años en la compañía | 2027-11-02 | 2028-05-31 | 149 | 99 | 100 PT/H / 7.2.1 Acompañamiento del personal con 20 o 30 años en la compañía #4472c4 false 2027-11-02 149 0 true |  |
| 101 | PT/H / 2 elementos: 6.5.2, 6.5.5 | 2027-11-04 | 2028-01-14 | 51 | 100 | 101 PT/H / 2 elementos: 6.5.2, 6.5.5 #4472c4 false 2027-11-04 51 0 true |  |
| 102 | PT/H / H4 — acta del CLIENTE (límite: mes 10) | 2027-11-08 | 2027-11-08 | 0 | 101 | 102 PT/H / H4 — acta del CLIENTE (límite: mes 10) #404040 true 2027-11-08 0 0 true | True |
| 103 | PT/H / 4.1.4 Piloto de cadena de frío en cuatro camiones | 2027-11-09 | 2027-12-20 | 29 | 102 | 103 PT/H / 4.1.4 Piloto de cadena de frío en cuatro camiones #4472c4 false 2027-11-09 29 0 true |  |
| 104 | PT/H / 3.8.7 Acta de certificación de la Etapa 1 (H5) | 2027-11-22 | 2027-12-01 | 8 | 103 | 104 PT/H / 3.8.7 Acta de certificación de la Etapa 1 (H5) #4472c4 false 2027-11-22 8 0 true |  |
| 105 | RC / 2 elementos: 3.7.3, 3.7.4 | 2027-12-01 | 2027-12-31 | 22 | 104 | 105 RC / 2 elementos: 3.7.3, 3.7.4 #c00000 false 2027-12-01 22 0 true |  |
| 106 | PT/H / 3 elementos: 3.10.1.4, 3.10.2.4, 3.10.3.4 | 2027-12-01 | 2028-03-20 | 78 | 105 | 106 PT/H / 3 elementos: 3.10.1.4, 3.10.2.4, 3.10.3.4 #4472c4 false 2027-12-01 78 0 true |  |
| 107 | PT/H / 4.1.2 Procedimiento de reversión de la Etapa 1 antes de las 05:30, con versión operativa local y DTE emitidos por el ERP | 2027-12-01 | 2027-12-10 | 7 | 106 | 107 PT/H / 4.1.2 Procedimiento de reversión de la Etapa 1 antes de las 05:30, con versión operativa local y DTE emitidos por el ERP #4472c4 false 2027-12-01 7 0 true |  |
| 108 | PT/H / 7.1.3 Incorporación de conductores de transportistas, escaneos y lectura del rojo | 2027-12-01 | 2028-09-29 | 210 | 107 | 108 PT/H / 7.1.3 Incorporación de conductores de transportistas, escaneos y lectura del rojo #4472c4 false 2027-12-01 210 0 true |  |
| 109 | PT/H / H5 — entrega del expediente | 2027-12-01 | 2027-12-01 | 0 | 108 | 109 PT/H / H5 — entrega del expediente #404040 true 2027-12-01 0 0 true | True |
| 110 | PT/H / 3.7.5 Acta de conciliación y corte fuera de las ventanas de congelamiento | 2028-01-03 | 2028-01-27 | 19 | 109 | 110 PT/H / 3.7.5 Acta de conciliación y corte fuera de las ventanas de congelamiento #4472c4 false 2028-01-03 19 0 true |  |
| 111 | PT/H / H5 — acta del CLIENTE (límite: mes 12) | 2028-01-03 | 2028-01-03 | 0 | 110 | 111 PT/H / H5 — acta del CLIENTE (límite: mes 12) #404040 true 2028-01-03 0 0 true | True |
| 112 | RC / H6 — inicio de marcha blanca (mes 13) | 2028-02-01 | 2028-02-01 | 0 | 111 | 112 RC / H6 — inicio de marcha blanca (mes 13) #c00000 true 2028-02-01 0 0 true | True |
| 113 | PT/H / 1.2.5 Documento de línea base de alcance de la Etapa 2: canal moderno y costo de servir (H8) | 2028-02-01 | 2028-02-09 | 7 | 112 | 113 PT/H / 1.2.5 Documento de línea base de alcance de la Etapa 2: canal moderno y costo de servir (H8) #4472c4 false 2028-02-01 7 0 true |  |
| 114 | PT/H / 2.1.4 Documento de diseño detallado de M11 y del intercambio con las cadenas | 2028-02-01 | 2028-02-16 | 12 | 113 | 114 PT/H / 2.1.4 Documento de diseño detallado de M11 y del intercambio con las cadenas #4472c4 false 2028-02-01 12 0 true |  |
| 115 | PT/H / 3.6.5 Intercambio electrónico con la principal cadena, con sus pruebas aprobadas (INT-08) | 2028-02-01 | 2028-07-04 | 107 | 114 | 115 PT/H / 3.6.5 Intercambio electrónico con la principal cadena, con sus pruebas aprobadas (INT-08) #4472c4 false 2028-02-01 107 0 true |  |
| 116 | PT/H / 3.10.4.1 Innovación 5: prototipo e informe de la prueba de comprensión (INN-05.P1) | 2028-02-01 | 2028-03-21 | 36 | 115 | 116 PT/H / 3.10.4.1 Innovación 5: prototipo e informe de la prueba de comprensión (INN-05.P1) #4472c4 false 2028-02-01 36 0 true |  |
| 117 | PT/H / 4.2.1 Marcha blanca de la Etapa 1 con conciliación diaria (H6) | 2028-02-01 | 2028-04-28 | 63 | 116 | 117 PT/H / 4.2.1 Marcha blanca de la Etapa 1 con conciliación diaria (H6) #4472c4 false 2028-02-01 63 0 true |  |
| 118 | PT/H / 7.2.5 Medición de la adopción y plan de acción correctiva | 2028-02-01 | 2028-10-31 | 187 | 117 | 118 PT/H / 7.2.5 Medición de la adopción y plan de acción correctiva #4472c4 false 2028-02-01 187 0 true |  |
| 119 | PT/H / 7.3.1 Certificación de preventistas, conductores y preparadores (Etapa 1) | 2028-02-01 | 2028-03-24 | 39 | 118 | 119 PT/H / 7.3.1 Certificación de preventistas, conductores y preparadores (Etapa 1) #4472c4 false 2028-02-01 39 0 true |  |
| 120 | PT/H / 2.4.2 Acta de aprobación del diseño detallado de la Etapa 2 (H8) | 2028-02-17 | 2028-02-28 | 8 | 119 | 120 PT/H / 2.4.2 Acta de aprobación del diseño detallado de la Etapa 2 (H8) #4472c4 false 2028-02-17 8 0 true |  |
| 121 | PT/H / H8 — entrega del expediente | 2028-02-28 | 2028-02-28 | 0 | 120 | 121 PT/H / H8 — entrega del expediente #404040 true 2028-02-28 0 0 true | True |
| 122 | PT/H / Inicio de la ola 3 de reparto | 2028-02-29 | 2028-02-29 | 0 | 121 | 122 PT/H / Inicio de la ola 3 de reparto #404040 true 2028-02-29 0 0 true | True |
| 123 | PT/H / 3.10.4.2 Innovación 5: evaluación de privacidad y diseño de la impresión en cabina (INN-05.P2) | 2028-03-01 | 2028-04-19 | 35 | 122 | 123 PT/H / 3.10.4.2 Innovación 5: evaluación de privacidad y diseño de la impresión en cabina (INN-05.P2) #4472c4 false 2028-03-01 35 0 true |  |
| 124 | PT/H / H8 — acta del CLIENTE (límite: mes 14) | 2028-03-13 | 2028-03-13 | 0 | 123 | 124 PT/H / H8 — acta del CLIENTE (límite: mes 14) #404040 true 2028-03-13 0 0 true | True |
| 125 | RC / 4 elementos: 3.5.1, 3.5.2, 3.5.3, 3.5.4 | 2028-03-15 | 2028-04-28 | 32 | 124 | 125 RC / 4 elementos: 3.5.1, 3.5.2, 3.5.3, 3.5.4 #c00000 false 2028-03-15 32 0 true |  |
| 126 | PT/H / 1.7.2 Primera actualización anual del Plan de Reversibilidad durante la implementación | 2028-04-03 | 2028-04-11 | 7 | 125 | 126 PT/H / 1.7.2 Primera actualización anual del Plan de Reversibilidad durante la implementación #4472c4 false 2028-04-03 7 0 true |  |
| 127 | PT/H / 3.10.4.3 Innovación 5: cálculo y bloques 1 a 3 de la hoja de negocio (INN-05.P3) | 2028-04-03 | 2028-06-09 | 48 | 126 | 127 PT/H / 3.10.4.3 Innovación 5: cálculo y bloques 1 a 3 de la hoja de negocio (INN-05.P3) #4472c4 false 2028-04-03 48 0 true |  |
| 128 | PT/H / 3.11.1 Documentación técnica, funcional, de arquitectura, de operación y de seguridad | 2028-04-03 | 2028-10-31 | 143 | 127 | 128 PT/H / 3.11.1 Documentación técnica, funcional, de arquitectura, de operación y de seguridad #4472c4 false 2028-04-03 143 0 true |  |
| 129 | PT/H / 7.1.4 Traspaso al equipo de TI de cuatro personas del CLIENTE | 2028-04-03 | 2028-09-29 | 123 | 128 | 129 PT/H / 7.1.4 Traspaso al equipo de TI de cuatro personas del CLIENTE #4472c4 false 2028-04-03 123 0 true |  |
| 130 | PT/H / 3.9.1 Pruebas de integración y regresión sin afectar la Etapa 1 en producción (H9) | 2028-05-02 | 2028-05-18 | 13 | 129 | 130 PT/H / 3.9.1 Pruebas de integración y regresión sin afectar la Etapa 1 en producción (H9) #4472c4 false 2028-05-02 13 0 true |  |
| 131 | PT/H / 4.2.2 Estabilización de la Etapa 1, acompañamiento en ruta y restauraciones de soporte puente | 2028-05-05 | 2028-09-29 | 101 | 130 | 131 PT/H / 4.2.2 Estabilización de la Etapa 1, acompañamiento en ruta y restauraciones de soporte puente #4472c4 false 2028-05-05 101 0 true |  |
| 132 | PT/H / 7.2.2 Gestión del cambio con las cadenas y los transportistas | 2028-05-02 | 2028-06-23 | 38 | 131 | 132 PT/H / 7.2.2 Gestión del cambio con las cadenas y los transportistas #4472c4 false 2028-05-02 38 0 true |  |
| 133 | PT/H / 4.2.3 Acta de aceptación de la Etapa 1 (H7) | 2028-05-05 | 2028-05-15 | 7 | 132 | 133 PT/H / 4.2.3 Acta de aceptación de la Etapa 1 (H7) #4472c4 false 2028-05-05 7 0 true |  |
| 134 | PT/H / H7 — entrega del expediente | 2028-05-15 | 2028-05-15 | 0 | 133 | 134 PT/H / H7 — entrega del expediente #404040 true 2028-05-15 0 0 true | True |
| 135 | PT/H / H9 — entrega del expediente | 2028-05-18 | 2028-05-18 | 0 | 134 | 135 PT/H / H9 — entrega del expediente #404040 true 2028-05-18 0 0 true | True |
| 136 | PT/H / 3 elementos: 3.9.3, 3.9.4, 3.9.7 | 2028-05-19 | 2028-06-01 | 10 | 135 | 136 PT/H / 3 elementos: 3.9.3, 3.9.4, 3.9.7 #4472c4 false 2028-05-19 10 0 true |  |
| 137 | PT/H / 3.9.5 Prueba de seguridad ofensiva de la Etapa 2, por un tercero independiente | 2028-05-19 | 2028-05-26 | 6 | 136 | 137 PT/H / 3.9.5 Prueba de seguridad ofensiva de la Etapa 2, por un tercero independiente #4472c4 false 2028-05-19 6 0 true |  |
| 138 | RC / H7 — acta del CLIENTE (límite: mes 16) | 2028-05-29 | 2028-05-29 | 0 | 137 | 138 RC / H7 — acta del CLIENTE (límite: mes 16) #c00000 true 2028-05-29 0 0 true | True |
| 139 | PT/H / 3.6.6 Incorporación de las demás cadenas al intercambio electrónico (INT-08) | 2028-06-01 | 2028-08-23 | 57 | 138 | 139 PT/H / 3.6.6 Incorporación de las demás cadenas al intercambio electrónico (INT-08) #4472c4 false 2028-06-01 57 0 true |  |
| 140 | PT/H / 4.1.3 Plan de implantación y reversión de la Etapa 2 fuera de la ventana de 05:30 a 07:00 | 2028-06-01 | 2028-06-09 | 7 | 139 | 140 PT/H / 4.1.3 Plan de implantación y reversión de la Etapa 2 fuera de la ventana de 05:30 a 07:00 #4472c4 false 2028-06-01 7 0 true |  |

| id | name | start | end | duration | order | attributes | milestone |
| --- | --- | --- | --- | --- | --- | --- | --- |
| 141 | PT/H / 5.4.3 Fórmula aprobada del tramo variable: reglas de atribución, canasta e índices (INN-04.P1) | 2028-06-01 | 2028-06-09 | 7 | 140 | 141 PT/H / 5.4.3 Fórmula aprobada del tramo variable: reglas de atribución, canasta e índices (INN-04.P1) #4472c4 false 2028-06-01 7 0 true |  |
| 142 | PT/H / H9 — acta del CLIENTE (límite: mes 17) | 2028-06-01 | 2028-06-01 | 0 | 141 | 142 PT/H / H9 — acta del CLIENTE (límite: mes 17) #404040 true 2028-06-01 0 0 true | True |
| 143 | PT/H / 3.9.2 Pruebas de aceptación y de accesibilidad con cadenas, transportistas, Comercial y Finanzas | 2028-06-02 | 2028-06-15 | 10 | 142 | 143 PT/H / 3.9.2 Pruebas de aceptación y de accesibilidad con cadenas, transportistas, Comercial y Finanzas #4472c4 false 2028-06-02 10 0 true |  |
| 144 | PT/H / 3.9.6 Acta de certificación de la Etapa 2 y cierre del desarrollo (H10) | 2028-06-16 | 2028-06-28 | 7 | 143 | 144 PT/H / 3.9.6 Acta de certificación de la Etapa 2 y cierre del desarrollo (H10) #4472c4 false 2028-06-16 7 0 true |  |
| 145 | PT/H / H10 — entrega del expediente | 2028-06-28 | 2028-06-28 | 0 | 144 | 145 PT/H / H10 — entrega del expediente #404040 true 2028-06-28 0 0 true | True |
| 146 | PT/H / 3.10.4.4 Innovación 5: hoja certificada, en marcha blanca y en producción (INN-05.P4, primera parte) | 2028-07-03 | 2028-09-29 | 62 | 145 | 146 PT/H / 3.10.4.4 Innovación 5: hoja certificada, en marcha blanca y en producción (INN-05.P4, primera parte) #4472c4 false 2028-07-03 62 0 true |  |
| 147 | PT/H / 7.3.2 Certificación de Comercial y Finanzas en costo de servir (Etapa 2) | 2028-07-03 | 2028-07-25 | 17 | 146 | 147 PT/H / 7.3.2 Certificación de Comercial y Finanzas en costo de servir (Etapa 2) #4472c4 false 2028-07-03 17 0 true |  |
| 148 | PT/H / H10 — acta del CLIENTE (límite: mes 18) | 2028-07-12 | 2028-07-12 | 0 | 147 | 148 PT/H / H10 — acta del CLIENTE (límite: mes 18) #404040 true 2028-07-12 0 0 true | True |
| 149 | RC / H11 — inicio de marcha blanca (mes 19) | 2028-08-01 | 2028-08-01 | 0 | 148 | 149 RC / H11 — inicio de marcha blanca (mes 19) #c00000 true 2028-08-01 0 0 true | True |
| 150 | PT/H / 4.3.1 Marcha blanca de la Etapa 2 en convivencia con la Etapa 1 y fuente única de datos (H11) | 2028-08-01 | 2028-09-29 | 41 | 149 | 150 PT/H / 4.3.1 Marcha blanca de la Etapa 2 en convivencia con la Etapa 1 y fuente única de datos (H11) #4472c4 false 2028-08-01 41 0 true |  |
| 151 | PT/H / 4.3.4 Garantía de correcto funcionamiento constituida, condición de la aceptación final (H12) | 2028-09-13 | 2028-09-25 | 7 | 150 | 151 PT/H / 4.3.4 Garantía de correcto funcionamiento constituida, condición de la aceptación final (H12) #4472c4 false 2028-09-13 7 0 true |  |
| 152 | PT/H / 4.3.2 Estabilización de la Etapa 2 con Comercial, Finanzas, cadenas y transportistas | 2028-10-05 | 2028-11-30 | 38 | 151 | 152 PT/H / 4.3.2 Estabilización de la Etapa 2 con Comercial, Finanzas, cadenas y transportistas #4472c4 false 2028-10-05 38 0 true |  |
| 153 | PT/H / 4.3.3 Acta de aceptación final de la implementación (H12) | 2028-10-02 | 2028-10-11 | 7 | 152 | 153 PT/H / 4.3.3 Acta de aceptación final de la implementación (H12) #4472c4 false 2028-10-02 7 0 true |  |
| 154 | PT/H / H12 — entrega del expediente | 2028-10-11 | 2028-10-11 | 0 | 153 | 154 PT/H / H12 — entrega del expediente #404040 true 2028-10-11 0 0 true | True |
| 155 | RC / H12 — acta del CLIENTE (límite: mes 21) | 2028-10-25 | 2028-10-25 | 0 | 154 | 155 RC / H12 — acta del CLIENTE (límite: mes 21) #c00000 true 2028-10-25 0 0 true | True |

Links (source, target, type, difference, hardness):
- 1 22 2 0 Rubber
- 1 17 1 0 Rubber
- 1 81 2 0 Rubber
- 3 11 3 0 Rubber
- 3 20 2 -1 Rubber
- 4 67 2 0 Rubber
- 5 48 2 0 Rubber
- 7 19 2 0 Rubber
- 9 20 2 -1 Rubber
- 11 30 2 0 Rubber
- 12 30 2 0 Rubber
- 13 30 2 0 Rubber
- 13 47 2 0 Rubber
- 16 34 2 0 Rubber
- 16 35 2 0 Rubber
- 16 46 2 0 Rubber
- 17 22 2 0 Rubber
- 17 103 2 0 Rubber
- 19 29 2 0 Rubber
- 19 36 2 0 Rubber
- 20 21 2 10 Rubber
- 21 11 3 0 Rubber
- 22 37 2 0 Rubber
- 22 64 2 0 Rubber
- 22 65 2 0 Rubber
- 22 103 2 0 Rubber
- 22 81 2 0 Rubber
- 25 30 2 0 Rubber
- 27 59 2 0 Rubber
- 27 60 2 0 Rubber
- 27 63 2 0 Rubber
- 27 64 2 0 Rubber
- 27 65 2 0 Rubber
- 27 66 2 0 Rubber
- 27 67 2 0 Rubber
- 27 68 2 0 Rubber
- 27 69 2 0 Rubber
- 27 61 2 0 Rubber
- 27 83 2 0 Rubber
- 29 36 2 0 Rubber
- 30 59 2 0 Rubber
- 30 60 2 0 Rubber
- 30 63 2 0 Rubber
- 30 64 2 0 Rubber
- 30 65 2 0 Rubber
- 30 66 2 0 Rubber
- 30 67 2 0 Rubber
- 30 68 2 0 Rubber
- 30 69 2 0 Rubber
- 30 61 2 0 Rubber
- 30 83 2 0 Rubber
- 30 31 2 -1 Rubber
- 31 42 2 10 Rubber
- 33 59 3 0 Rubber
- 33 60 3 0 Rubber
- 33 63 3 0 Rubber
- 33 64 3 0 Rubber
- 33 65 3 0 Rubber
- 33 66 3 0 Rubber
- 33 67 3 0 Rubber
- 33 68 3 0 Rubber
- 33 69 3 0 Rubber
- 33 61 3 0 Rubber
- 33 83 3 0 Rubber
- 34 44 2 0 Rubber
- 35 65 2 0 Rubber
- 36 43 2 0 Rubber
- 37 64 2 0 Rubber
- 37 65 2 0 Rubber
- 37 103 2 0 Rubber
- 37 81 2 0 Rubber
- 41 57 2 0 Rubber
- 41 62 2 0 Rubber
- 42 59 2 0 Rubber
- 42 60 2 0 Rubber
- 42 63 2 0 Rubber
- 42 64 2 0 Rubber
- 42 65 2 0 Rubber
- 42 66 2 0 Rubber
- 42 67 2 0 Rubber
- 42 68 2 0 Rubber
- 42 69 2 0 Rubber
- 42 61 2 0 Rubber
- 42 83 2 0 Rubber
- 43 57 2 0 Rubber
- 43 62 2 0 Rubber
- 44 59 3 0 Rubber
- 44 60 3 0 Rubber
- 44 63 3 0 Rubber
- 44 64 3 0 Rubber
- 44 65 3 0 Rubber
- 44 66 3 0 Rubber
- 44 67 3 0 Rubber
- 44 68 3 0 Rubber
- 44 69 3 0 Rubber
- 44 61 3 0 Rubber
- 44 83 3 0 Rubber
- 44 70 2 -1 Rubber
- 45 59 3 0 Rubber
- 45 60 3 0 Rubber
- 45 63 3 0 Rubber
- 45 64 3 0 Rubber
- 45 65 3 0 Rubber
- 45 66 3 0 Rubber
- 45 67 3 0 Rubber
- 45 68 3 0 Rubber
- 45 69 3 0 Rubber
- 45 61 3 0 Rubber
- 45 83 3 0 Rubber
- 45 70 2 -1 Rubber
- 46 90 2 0 Rubber
- 47 59 1 0 Rubber
- 47 60 1 0 Rubber
- 47 63 1 0 Rubber
- 47 64 1 0 Rubber
- 47 65 1 0 Rubber
- 47 66 1 0 Rubber
- 47 67 1 0 Rubber
- 47 68 1 0 Rubber
- 47 69 1 0 Rubber
- 47 61 1 0 Rubber
- 47 83 1 0 Rubber
- 48 59 1 0 Rubber
- 48 60 1 0 Rubber
- 48 63 1 0 Rubber
- 48 64 1 0 Rubber
- 48 65 1 0 Rubber
- 48 66 1 0 Rubber
- 48 67 1 0 Rubber
- 48 68 1 0 Rubber
- 48 69 1 0 Rubber
- 48 61 1 0 Rubber
- 48 83 1 0 Rubber
- 49 59 1 0 Rubber
- 49 60 1 0 Rubber
- 49 63 1 0 Rubber
- 49 64 1 0 Rubber
- 49 65 1 0 Rubber
- 49 66 1 0 Rubber
- 49 67 1 0 Rubber
- 49 68 1 0 Rubber
- 49 69 1 0 Rubber
- 49 61 1 0 Rubber
- 49 83 1 0 Rubber
- 50 59 1 0 Rubber
- 50 60 1 0 Rubber
- 50 63 1 0 Rubber
- 50 64 1 0 Rubber
- 50 65 1 0 Rubber
- 50 66 1 0 Rubber
- 50 67 1 0 Rubber
- 50 68 1 0 Rubber
- 50 69 1 0 Rubber
- 50 61 1 0 Rubber
- 50 83 1 0 Rubber
- 54 59 1 0 Rubber
- 54 60 1 0 Rubber
- 54 63 1 0 Rubber
- 54 64 1 0 Rubber
- 54 65 1 0 Rubber
- 54 66 1 0 Rubber
- 54 67 1 0 Rubber
- 54 68 1 0 Rubber
- 54 69 1 0 Rubber
- 54 61 1 0 Rubber
- 54 83 1 0 Rubber
- 58 59 1 0 Rubber
- 58 60 1 0 Rubber
- 58 63 1 0 Rubber
- 58 64 1 0 Rubber
- 58 65 1 0 Rubber
- 58 66 1 0 Rubber
- 58 67 1 0 Rubber
- 58 68 1 0 Rubber
- 58 69 1 0 Rubber
- 58 61 1 0 Rubber
- 58 83 1 0 Rubber
- 59 63 3 2 Rubber
- 59 64 3 2 Rubber
- 59 89 2 0 Rubber
- 60 63 3 2 Rubber
- 60 64 3 2 Rubber
- 60 66 1 0 Rubber
- 60 89 2 0 Rubber
- 61 89 2 0 Rubber
- 62 70 2 -1 Rubber
- 63 67 3 2 Rubber
- 63 68 3 2 Rubber
- 63 89 2 0 Rubber
- 64 89 2 0 Rubber
- 64 103 2 0 Rubber
- 65 89 2 0 Rubber
- 65 103 2 0 Rubber
- 66 67 3 2 Rubber
- 66 68 3 2 Rubber
- 66 89 2 0 Rubber
- 67 89 2 0 Rubber
- 68 61 3 2 Rubber
- 68 89 2 0 Rubber
- 69 89 2 0 Rubber
- 70 75 2 10 Rubber
- 73 89 2 0 Rubber
- 76 89 2 0 Rubber
- 80 110 3 3 Rubber
- 81 84 1 0 Rubber
- 81 122 2 -1 Rubber
- 83 89 2 0 Rubber
- 84 103 2 0 Rubber
- 86 122 2 -1 Rubber
- 88 110 3 3 Rubber
- 89 94 2 0 Rubber
- 89 95 2 0 Rubber
- 89 103 2 0 Rubber
- 89 93 2 -1 Rubber
- 93 102 2 10 Rubber
- 94 104 2 0 Rubber
- 95 104 2 0 Rubber
- 97 117 2 0 Rubber
- 102 103 2 0 Rubber
- 103 122 2 -1 Rubber
- 104 109 2 -1 Rubber
- 105 110 3 3 Rubber
- 107 117 2 0 Rubber
- 109 111 2 10 Rubber
- 110 117 2 0 Rubber
- 111 117 2 0 Rubber
- 113 120 2 0 Rubber
- 113 125 2 0 Rubber
- 113 121 2 -1 Rubber
- 114 120 2 0 Rubber
- 115 150 2 0 Rubber
- 117 133 2 0 Rubber
- 117 112 1 0 Rubber
- 119 133 2 0 Rubber
- 120 125 2 0 Rubber
- 120 121 2 -1 Rubber
- 121 124 2 10 Rubber
- 124 125 2 0 Rubber
- 125 130 2 0 Rubber
- 129 153 2 0 Rubber
- 130 143 2 0 Rubber
- 130 136 2 0 Rubber
- 130 137 2 0 Rubber
- 130 144 2 0 Rubber
- 130 135 2 -1 Rubber
- 133 134 2 -1 Rubber
- 134 138 2 10 Rubber
- 135 142 2 10 Rubber
- 136 144 2 0 Rubber
- 137 144 2 0 Rubber
- 140 150 2 0 Rubber
- 143 144 2 0 Rubber
- 144 145 2 -1 Rubber
- 145 148 2 10 Rubber
- 147 153 2 0 Rubber
- 148 150 2 0 Rubber
- 150 153 2 0 Rubber
- 150 149 1 0 Rubber
- 151 153 2 0 Rubber
- 151 154 2 -1 Rubber
- 153 154 2 -1 Rubber
- 154 155 2 10 Rubber
